# Cronograma Sistema Academia

Schedule from MS Project, 2024-06-05 to 2024-08-09, costs in R$.

## Calendars

- Padrão: Mon-Fri 09:00-12:00, 13:00-18:00; Sat-Sun off.

## Resources

| Resource | Rate |
| --- | --- |
| Desenvolvedor |  |
| Arquiteto de Software | 200 |
| Registrador | 50 |
| Testador de Software | 90 |
| Cliente |  |
| Documentador | 40 |
| Testador de Qualidade | 80 |
| Desenvolvedor Principal | 120 |

## Schedule

| ID | WBS | Task | Type | Duration | Start | Finish | Predecessors | Total slack | Resources | Work | Cost |
| --- | --- | --- | --- | --- | --- | --- | --- | --- | --- | --- | --- |
| 1 | 1 | **Projeto Sistema Academia** |  | 48d | 2024-06-05 | 2024-08-09 |  | 0d |  | 321.92h | 34,625 |
| 2 | 1.1 | **Prospecção** |  | 48d | 2024-06-05 | 2024-08-09 |  | 0d |  | 321.92h | 34,625 |
| 3 | 1.1.1 | **PTEC** |  | 5d | 2024-06-05 | 2024-06-11 |  | 0d |  | 48.17h | 3,760 |
| 4 | 1.1.1.1 | Estudar Domicílio de Aplicação | manual | 1d | 2024-06-05 | 2024-06-05 |  |  | Registrador; Documentador | 16h | 720 |
| 5 | 1.1.1.2 | Reunir-se com cliente (Fornecedor de Requisitos) | manual | 2d | 2024-06-06 | 2024-06-07 | 4 |  | Arquiteto de Software | 8h | 1,600 |
| 6 | 1.1.1.3 | Redigir PTEC | manual | 1d | 2024-06-07 | 2024-06-07 | 5 |  | Registrador; Documentador | 16h | 720 |
| 7 | 1.1.1.4 | Revisar Proposta Técnica | manual | 1d | 2024-06-10 | 2024-06-10 | 6 |  | Testador de Software | 8h | 720 |
| 8 | 1.1.1.5 | Aprovar PTEC | manual | 1d | 2024-06-11 | 2024-06-11 | 7 |  | Cliente | 0.17h |  |
| 9 | 1.1.2 | **Estimativa Preliminar de Tamanho** |  | 2d | 2024-06-11 | 2024-06-12 |  | 0d |  | 2h | 120 |
| 10 | 1.1.2.1 | Estimar tamanho do Projeto | manual | 1d | 2024-06-11 | 2024-06-11 | 7 |  | Documentador | 1h | 40 |
| 11 | 1.1.2.2 | Revisar Estimativa de Tamanho do Projeto | manual | 1d | 2024-06-12 | 2024-06-12 | 10 |  | Testador de Qualidade | 1h | 80 |
| 12 | 1.1.3 | **Estimativa Preliminar de Cronograma e Orçamento** |  | 2d | 2024-06-13 | 2024-06-14 |  | 0d |  | 16h | 2,320 |
| 13 | 1.1.3.1 | Elaborar Cronograma e Orçamento Preliminares | manual | 2d | 2024-06-13 | 2024-06-14 | 9 |  | Arquiteto de Software | 8h | 1,600 |
| 14 | 1.1.3.2 | Revisar Cronograma e Orçamento Preliminares | manual | 1d | 2024-06-14 | 2024-06-14 | 13 |  | Testador de Software | 8h | 720 |
| 15 | 1.1.4 | **Análise** |  | 40d | 2024-06-17 | 2024-08-09 |  | 0d |  | 255.75h | 28,425 |
| 16 | 1.1.4.1 | **Documento de Requisitos** |  | 4d | 2024-06-17 | 2024-06-21 |  | 0d |  | 50.25h | 9,410 |
| 17 | 1.1.4.1.1 | Reunir-se com o Cliente | manual | 2d | 2024-06-17 | 2024-06-18 | 14 |  | Arquiteto de Software | 6h | 1,200 |
| 18 | 1.1.4.1.2 | Elaborar DRE | manual | 2d | 2024-06-18 | 2024-06-19 | 17 |  | Arquiteto de Software | 36h | 7,200 |
| 19 | 1.1.4.1.3 | Revisar DRE | manual | 1d | 2024-06-19 | 2024-06-19 | 18 |  | Desenvolvedor Principal | 8h | 960 |
| 20 | 1.1.4.1.4 | Submeter DRE para aprovação do Cliente | manual | 2d | 2024-06-20 | 2024-06-21 | 19 |  | Arquiteto de Software | 0.25h | 50 |
| 21 | 1.1.4.2 | **MRB** |  | 2d | 2024-06-21 | 2024-06-25 |  | 0d |  | 17h | 1,075 |
| 22 | 1.1.4.2.1 | Elaborar MRB | manual | 1d | 2024-06-21 | 2024-06-21 | 20 |  | Documentador; Registrador | 15h | 675 |
| 23 | 1.1.4.2.2 | Revisar MRB | manual | 2d | 2024-06-24 | 2024-06-25 | 22 |  | Arquiteto de Software | 2h | 400 |
| 24 | 1.1.4.3 | **Projeto** |  | 33d | 2024-06-25 | 2024-08-08 |  | 0d |  | 183.5h | 17,340 |
| 25 | 1.1.4.3.1 | **Diagrama de Classes** |  | 3d | 2024-06-25 | 2024-06-27 |  | 0d |  | 17h | 1,635 |
| 26 | 1.1.4.3.1.1 | Elaborar Diagrama de Classes | manual | 2d | 2024-06-25 | 2024-06-26 | 23 |  | Arquiteto de Software; Registrador | 10h | 1,250 |
| 27 | 1.1.4.3.1.2 | Revisar Diagrama de Classes | manual | 1d | 2024-06-26 | 2024-06-26 | 26 |  | Testador de Qualidade | 2h | 160 |
| 28 | 1.1.4.3.1.3 | Atualizar MRB | manual | 1d | 2024-06-27 | 2024-06-27 | 27 |  | Documentador; Registrador | 5h | 225 |

| ID | WBS | Task | Type | Duration | Start | Finish | Predecessors | Total slack | Resources | Work | Cost |
| --- | --- | --- | --- | --- | --- | --- | --- | --- | --- | --- | --- |
| 29 | 1.1.4.3.2 | **Modelo Entidade Relacionamento** |  | 2d | 2024-06-28 | 2024-07-01 |  | 0d |  | 6h | 1,080 |
| 30 | 1.1.4.3.2.1 | Elaborar MER | manual | 2d | 2024-06-28 | 2024-07-01 | 28 |  | Arquiteto de Software | 5h | 1,000 |
| 31 | 1.1.4.3.2.2 | Revisar MER | manual | 1d | 2024-07-01 | 2024-07-01 | 30 |  | Testador de Qualidade | 1h | 80 |
| 32 | 1.1.4.3.3 | **Implementação** |  | 28d | 2024-07-02 | 2024-08-08 |  | 0d |  | 160.5h | 14,625 |
| 33 | 1.1.4.3.3.1 | **Release 01** |  | 10d | 2024-07-02 | 2024-07-15 |  | 0d |  | 68.5h | 5,670 |
| 34 | 1.1.4.3.3.1.1 | **Implementação RFC01** |  | 5d | 2024-07-02 | 2024-07-08 |  | 0d |  | 17.5h | 1,985 |
| 35 | 1.1.4.3.3.1.1.1 | Implementar RFS01 | manual | 2d | 2024-07-02 | 2024-07-03 | 31 |  | Arquiteto de Software; Desenvolvedor | 6h | 600 |
| 36 | 1.1.4.3.3.1.1.2 | Implementar RFS02 | manual | 2d | 2024-07-03 | 2024-07-04 | 35 |  | Arquiteto de Software | 2.5h | 500 |
| 37 | 1.1.4.3.3.1.1.3 | Implementar RFS03 | manual | 2d | 2024-07-04 | 2024-07-05 | 36 |  | Arquiteto de Software; Desenvolvedor | 4h | 400 |
| 38 | 1.1.4.3.3.1.1.4 | Implementar RFS04 | manual | 2d | 2024-07-05 | 2024-07-08 | 37 |  | Arquiteto de Software; Desenvolvedor | 4h | 400 |
| 39 | 1.1.4.3.3.1.1.5 | Testar RFC01 | manual | 1d | 2024-07-08 | 2024-07-08 | 38 |  | Testador de Qualidade; Testador de Software | 1h | 85 |
| 40 | 1.1.4.3.3.1.2 | **Implementação RFC02** |  | 5d | 2024-07-09 | 2024-07-15 |  | 0d |  | 51h | 3,685 |
| 41 | 1.1.4.3.3.1.2.1 | Implementar RFS05 | manual | 2d | 2024-07-09 | 2024-07-10 | 39 |  | Arquiteto de Software; Desenvolvedor | 15h | 1,400 |
| 42 | 1.1.4.3.3.1.2.2 | Implementar RFS06 | manual | 2d | 2024-07-10 | 2024-07-11 | 41 |  | Arquiteto de Software; Desenvolvedor | 13h | 1,000 |
| 43 | 1.1.4.3.3.1.2.3 | Implementar RFS07 | manual | 2d | 2024-07-11 | 2024-07-12 | 42 |  | Arquiteto de Software; Desenvolvedor | 12h | 800 |
| 44 | 1.1.4.3.3.1.2.4 | Implementar RFS08 | manual | 2d | 2024-07-12 | 2024-07-15 | 43 |  | Arquiteto de Software; Desenvolvedor | 10h | 400 |
| 45 | 1.1.4.3.3.1.2.5 | TESTAR RFC02 | manual | 1d | 2024-07-15 | 2024-07-15 | 44 |  | Testador de Qualidade; Testador de Software | 1h | 85 |
| 46 | 1.1.4.3.3.2 | **Release 02** |  | 12d | 2024-07-16 | 2024-07-31 |  | 0d |  | 64h | 6,170 |
| 47 | 1.1.4.3.3.2.1 | **Implementação RFC03** |  | 5d | 2024-07-16 | 2024-07-22 |  | 0d |  | 29h | 2,685 |
| 48 | 1.1.4.3.3.2.1.1 | Implementar RFS09 | manual | 2d | 2024-07-16 | 2024-07-17 | 45 |  | Arquiteto de Software; Desenvolvedor | 5h | 500 |
| 49 | 1.1.4.3.3.2.1.2 | Implementar RFS10 | manual | 2d | 2024-07-17 | 2024-07-18 | 48 |  | Arquiteto de Software; Desenvolvedor | 14h | 1,200 |
| 50 | 1.1.4.3.3.2.1.3 | Implementar RFS11 | manual | 2d | 2024-07-18 | 2024-07-19 | 49 |  | Arquiteto de Software; Desenvolvedor | 5h | 500 |
| 51 | 1.1.4.3.3.2.1.4 | Implementar RFS12 | manual | 2d | 2024-07-19 | 2024-07-22 | 50 |  | Arquiteto de Software; Desenvolvedor | 4h | 400 |
| 52 | 1.1.4.3.3.2.1.5 | Testar RFC03 | manual | 1d | 2024-07-22 | 2024-07-22 | 51 |  | Testador de Qualidade; Testador de Software | 1h | 85 |

| ID | WBS | Task | Type | Duration | Start | Finish | Predecessors | Total slack | Resources | Work | Cost |
| --- | --- | --- | --- | --- | --- | --- | --- | --- | --- | --- | --- |
| 53 | 1.1.4.3.3.2.2 | **Implementação RFC04** |  | 7d | 2024-07-23 | 2024-07-31 |  | 0d |  | 35h | 3,485 |
| 54 | 1.1.4.3.3.2.2.1 | Implementar RFS13 | manual | 2d | 2024-07-23 | 2024-07-24 | 52 |  | Arquiteto de Software; Desenvolvedor | 5h | 500 |
| 55 | 1.1.4.3.3.2.2.2 | Implementar RFS14 | manual | 2d | 2024-07-24 | 2024-07-25 | 54 |  | Arquiteto de Software; Desenvolvedor | 8h | 800 |
| 56 | 1.1.4.3.3.2.2.3 | Implementar RFS15 | manual | 2d | 2024-07-25 | 2024-07-26 | 55 |  | Arquiteto de Software; Desenvolvedor | 7h | 700 |
| 57 | 1.1.4.3.3.2.2.4 | Implementar RFS16 | manual | 2d | 2024-07-26 | 2024-07-29 | 56 |  | Arquiteto de Software; Desenvolvedor | 5h | 500 |
| 58 | 1.1.4.3.3.2.2.5 | Implementar RFS17 | manual | 2d | 2024-07-29 | 2024-07-30 | 57 |  | Arquiteto de Software; Desenvolvedor | 5h | 500 |
| 59 | 1.1.4.3.3.2.2.6 | Implementar RFS18 | manual | 2d | 2024-07-30 | 2024-07-31 | 58 |  | Arquiteto de Software; Cliente | 4h | 400 |
| 60 | 1.1.4.3.3.2.2.7 | Testar RFC04 | manual | 1d | 2024-07-31 | 2024-07-31 | 59 |  | Testador de Qualidade; Testador de Software | 1h | 85 |
| 61 | 1.1.4.3.3.3 | **Release 03** |  | 6d | 2024-08-01 | 2024-08-08 |  | 0d |  | 28h | 2,785 |
| 62 | 1.1.4.3.3.3.1 | **Implementação RFC05** |  | 6d | 2024-08-01 | 2024-08-08 |  | 0d |  | 28h | 2,785 |
| 63 | 1.1.4.3.3.3.1.1 | Implementar RFS19 | manual | 2d | 2024-08-01 | 2024-08-02 | 60 |  | Arquiteto de Software; Desenvolvedor | 5h | 500 |
| 64 | 1.1.4.3.3.3.1.2 | Implementar RFS20 | manual | 2d | 2024-08-02 | 2024-08-05 | 63 |  | Arquiteto de Software; Desenvolvedor | 6h | 600 |
| 65 | 1.1.4.3.3.3.1.3 | Implementar RFS21 | manual | 2d | 2024-08-05 | 2024-08-06 | 64 |  | Arquiteto de Software; Desenvolvedor | 5h | 500 |
| 66 | 1.1.4.3.3.3.1.4 | Implementar RFS22 | manual | 2d | 2024-08-06 | 2024-08-07 | 65 |  | Arquiteto de Software; Desenvolvedor | 4h | 400 |
| 67 | 1.1.4.3.3.3.1.5 | Implementar RFS23 | manual | 2d | 2024-08-07 | 2024-08-08 | 66 |  | Arquiteto de Software; Desenvolvedor | 7h | 700 |
| 68 | 1.1.4.3.3.3.1.6 | Testar RFC05 | manual | 1d | 2024-08-08 | 2024-08-08 | 67 |  | Testador de Qualidade; Testador de Software | 1h | 85 |
| 69 | 1.1.4.4 | **Monitoramento e Controle** |  | 1d | 2024-08-09 | 2024-08-09 |  | 0d |  | 5h | 600 |
| 70 | 1.1.4.4.1 | Acompanhar o Projeto | manual | 1d | 2024-08-09 | 2024-08-09 | 68 |  | Desenvolvedor Principal | 5h | 600 |
