# Cronograma Sistema Academia

Schedule from MS Project, 2024-06-05 to 2024-08-09, costs in R$.

## Calendars

- Padrão: Mon-Fri 09:00-12:00, 13:00-18:00; Sat-Sun off.

## Resources

| Resource | Rate |
| --- | --- |
| Desenvolvedor |  |
| Arquiteto de Software | 200 |
| Registrador | 50 |
| Testador de Software | 90 |
| Cliente |  |
| Documentador | 40 |
| Testador de Qualidade | 80 |
| Desenvolvedor Principal | 120 |

## Schedule

| ID | WBS | Task | Type | Duration | Start | Finish | Predecessors | Total slack | Resources | Work | Cost |
| --- | --- | --- | --- | --- | --- | --- | --- | --- | --- | --- | --- |
| 1 | 1 | **Projeto Sistema Academia** |  | 48d? | 2024-06-05 | 2024-08-09 |  | 0d |  | 326.81h | 26,939.37 |
| 2 | 1.1 | **Prospecção** |  | 8d | 2024-06-05 | 2024-06-14 |  | 0d |  | 15.25h | 1,172.5 |
| 3 | 1.1.1 | **PTEC** |  | 8d | 2024-06-05 | 2024-06-14 |  | 0d |  | 15.25h | 1,172.5 |
| 4 | 1.1.1.1 | Estudar Domicílio de Aplicação | manual | 1d | 2024-06-05 | 2024-06-05 |  |  | Registrador; Documentador | 8h | 360 |
| 5 | 1.1.1.2 | Reunir-se com cliente (Fornecedor de Requisitos) | manual | 2d | 2024-06-06 | 2024-06-07 | 4 |  | Arquiteto de Software | 2h | 400 |
| 6 | 1.1.1.3 | Redigir PTEC | manual | 0.12d | 2024-06-07 | 2024-06-07 | 5 |  | Registrador; Documentador | 2h | 90 |
| 7 | 1.1.1.4 | Revisar Proposta Técnica | manual | 1d | 2024-06-10 | 2024-06-10 | 6 |  | Testador de Software | 1h | 90 |
| 8 | 1.1.1.5 | Aprovar PTEC | manual | 1d | 2024-06-11 | 2024-06-11 | 7 |  | Cliente | 0.17h |  |
| 9 | 1.1.1.6 | **Estimativa Preliminar de Tamanho** |  | 2d | 2024-06-11 | 2024-06-12 |  | 0d |  | 0.83h | 46.67 |
| 10 | 1.1.1.6.1 | Estimar tamanho do Projeto | manual | 1d | 2024-06-11 | 2024-06-11 | 7 |  | Documentador | 0.5h | 20 |
| 11 | 1.1.1.6.2 | Revisar Estimativa de Tamanho do Projeto | manual | 1d | 2024-06-12 | 2024-06-12 | 10 |  | Testador de Qualidade | 0.33h | 26.67 |
| 12 | 1.1.1.7 | **Estimativa Preliminar de Cronograma e Orçamento** |  | 2d | 2024-06-13 | 2024-06-14 |  | 0d |  | 1.25h | 185.83 |
| 13 | 1.1.1.7.1 | Elaborar Cronograma e Orçamento Preliminares | manual | 2d | 2024-06-13 | 2024-06-14 | 9 |  | Arquiteto de Software | 0.67h | 133.33 |
| 14 | 1.1.1.7.2 | Revisar Cronograma e Orçamento Preliminares | manual | 1d | 2024-06-14 | 2024-06-14 | 13 |  | Testador de Software | 0.58h | 52.5 |
| 15 | 1.2 | **Planejamento** |  | 1d? | 2024-06-17 | 2024-06-17 |  | 0d |  | 21.79h |  |
| 16 | 1.2.1 | Planejar a distribuição de funções | manual | 1d? | 2024-06-17 | 2024-06-17 | 2 |  |  | 10h |  |
| 17 | 1.2.2 | Organizar e distribuir a função de cada funcionário | manual | 1d? | 2024-06-17 | 2024-06-17 | 2 |  |  | 11.79h |  |
| 18 | 1.3 | **Análise** |  | 6d | 2024-06-17 | 2024-06-25 |  | 0d |  | 53.74h | 7,623 |
| 19 | 1.3.1 | **Documento de Requisitos** |  | 4d | 2024-06-17 | 2024-06-21 |  | 0d |  | 36.74h | 6,548 |
| 20 | 1.3.1.1 | Reunir-se com o Cliente | manual | 2d | 2024-06-17 | 2024-06-18 | 14 |  | Arquiteto de Software | 6h | 1,200 |
| 21 | 1.3.1.2 | Elaborar DRE | manual | 2d | 2024-06-18 | 2024-06-19 | 20 |  | Arquiteto de Software | 20h | 4,000 |
| 22 | 1.3.1.3 | Revisar DRE | manual | 1d | 2024-06-19 | 2024-06-19 | 21 |  | Desenvolvedor Principal | 10h | 1,200 |
| 23 | 1.3.1.4 | Submeter DRE para aprovação do Cliente | manual | 2d | 2024-06-20 | 2024-06-21 | 22 |  | Arquiteto de Software | 0.74h | 148 |
| 24 | 1.3.2 | **MRB** |  | 2d | 2024-06-21 | 2024-06-25 |  | 0d |  | 17h | 1,075 |
| 25 | 1.3.2.1 | Elaborar MRB | manual | 1d | 2024-06-21 | 2024-06-21 | 23 |  | Documentador; Registrador | 15h | 675 |
| 26 | 1.3.2.2 | Revisar MRB | manual | 2d | 2024-06-24 | 2024-06-25 | 25 |  | Arquiteto de Software | 2h | 400 |

| ID | WBS | Task | Type | Duration | Start | Finish | Predecessors | Total slack | Resources | Work | Cost |
| --- | --- | --- | --- | --- | --- | --- | --- | --- | --- | --- | --- |
| 27 | 1.4 | **Projeto** |  | 19d | 2024-06-05 | 2024-07-01 |  | 14d |  | 13.44h | 1,574.8 |
| 28 | 1.4.1 | Diagrama de Classes |  | 1d | 2024-06-05 | 2024-06-05 |  | 47d |  |  |  |
| 29 | 1.4.2 | Elaborar Diagrama de Classes | manual | 2d | 2024-06-25 | 2024-06-26 | 26 |  | Arquiteto de Software; Registrador | 5h | 625 |
| 30 | 1.4.3 | **Revisar Diagrama de Classes** |  | 1d | 2024-06-26 | 2024-06-26 |  |  | Testador de Qualidade | 8.44h | 949.8 |
| 31 | 1.4.3.1 | Atualizar MRB | manual | 1d | 2024-06-27 | 2024-06-27 |  |  | Documentador; Registrador | 2.44h | 109.8 |
| 32 | 1.4.3.2 | **Modelo Entidade Relacionamento** |  | 2d | 2024-06-28 | 2024-07-01 |  | 0d |  | 4h | 680 |
| 33 | 1.4.3.2.1 | Elaborar MER | manual | 2d | 2024-06-28 | 2024-07-01 | 31 |  | Arquiteto de Software | 3h | 600 |
| 34 | 1.4.3.2.2 | Revisar MER | manual | 1d | 2024-07-01 | 2024-07-01 | 33 |  | Testador de Qualidade | 1h | 80 |
| 35 | 1.5 | **Implementação** |  | 28d | 2024-07-02 | 2024-08-08 |  | 0d |  | 181.56h | 15,969.07 |
| 36 | 1.5.1 | **Release 01** |  | 9.25d | 2024-07-02 | 2024-07-15 |  | 0d |  | 65.56h | 5,414.07 |
| 37 | 1.5.1.1 | **Implementação RFC01** |  | 5d | 2024-07-02 | 2024-07-08 |  | 0d |  | 19h | 2,185 |
| 38 | 1.5.1.1.1 | Implementar RFS01 | manual | 2d | 2024-07-02 | 2024-07-03 | 34 |  | Arquiteto de Software; Desenvolvedor | 5h | 500 |
| 39 | 1.5.1.1.2 | Implementar RFS02 | manual | 2d | 2024-07-03 | 2024-07-04 | 38 |  | Arquiteto de Software | 3h | 600 |
| 40 | 1.5.1.1.3 | Implementar RFS03 | manual | 2d | 2024-07-04 | 2024-07-05 | 39 |  | Arquiteto de Software; Desenvolvedor | 4h | 400 |
| 41 | 1.5.1.1.4 | Implementar RFS04 | manual | 2d | 2024-07-05 | 2024-07-08 | 40 |  | Arquiteto de Software; Desenvolvedor | 6h | 600 |
| 42 | 1.5.1.1.5 | Testar RFC01 | manual | 1d | 2024-07-08 | 2024-07-08 | 41 |  | Testador de Qualidade; Testador de Software | 1h | 85 |
| 43 | 1.5.1.2 | **Implementação RFC02** |  | 4.25d | 2024-07-09 | 2024-07-15 |  | 0d |  | 46.56h | 3,229.07 |
| 44 | 1.5.1.2.1 | Implementar RFS05 | manual | 2d | 2024-07-09 | 2024-07-10 | 42 |  | Arquiteto de Software; Desenvolvedor | 7h | 653.33 |
| 45 | 1.5.1.2.2 | Implementar RFS06 | manual | 2d | 2024-07-10 | 2024-07-11 | 44 |  | Arquiteto de Software; Desenvolvedor | 13h | 1,000 |
| 46 | 1.5.1.2.3 | Implementar RFS07 | manual | 2d | 2024-07-11 | 2024-07-12 | 45 |  | Arquiteto de Software; Desenvolvedor | 12.5h | 833.33 |
| 47 | 1.5.1.2.4 | Implementar RFS08 | manual | 2d | 2024-07-12 | 2024-07-15 | 46 |  | Arquiteto de Software; Desenvolvedor | 10.06h | 402.4 |
| 48 | 1.5.1.2.5 | TESTAR RFC02 | manual | 0.25d | 2024-07-15 | 2024-07-15 | 47 |  | Testador de Qualidade; Testador de Software | 4h | 340 |
| 49 | 1.5.2 | **Release 02** |  | 12d | 2024-07-16 | 2024-07-31 |  | 0d |  | 80h | 7,770 |
| 50 | 1.5.2.1 | **Implementação RFC03** |  | 5d | 2024-07-16 | 2024-07-22 |  | 0d |  | 39h | 3,685 |
| 51 | 1.5.2.1.1 | Implementar RFS09 | manual | 2d | 2024-07-16 | 2024-07-17 | 48 |  | Arquiteto de Software; Desenvolvedor | 12h | 1,200 |
| 52 | 1.5.2.1.2 | Implementar RFS10 | manual | 2d | 2024-07-17 | 2024-07-18 | 51 |  | Arquiteto de Software; Desenvolvedor | 14h | 1,200 |
| 53 | 1.5.2.1.3 | Implementar RFS11 | manual | 2d | 2024-07-18 | 2024-07-19 | 52 |  | Arquiteto de Software; Desenvolvedor | 5h | 500 |
| 54 | 1.5.2.1.4 | Implementar RFS12 | manual | 0.69d | 2024-07-19 | 2024-07-19 | 53 |  | Arquiteto de Software; Desenvolvedor | 7h | 700 |
| 55 | 1.5.2.1.5 | Testar RFC03 | manual | 1d | 2024-07-22 | 2024-07-22 | 54 |  | Testador de Qualidade; Testador de Software | 1h | 85 |

| ID | WBS | Task | Type | Duration | Start | Finish | Predecessors | Total slack | Resources | Work | Cost |
| --- | --- | --- | --- | --- | --- | --- | --- | --- | --- | --- | --- |
| 56 | 1.5.2.2 | **Implementação RFC04** |  | 7d | 2024-07-23 | 2024-07-31 |  | 0d |  | 41h | 4,085 |
| 57 | 1.5.2.2.1 | Implementar RFS13 | manual | 2d | 2024-07-23 | 2024-07-24 | 55 |  | Arquiteto de Software; Desenvolvedor | 5h | 500 |
| 58 | 1.5.2.2.2 | Implementar RFS14 | manual | 2d | 2024-07-24 | 2024-07-25 | 57 |  | Arquiteto de Software; Desenvolvedor | 8h | 800 |
| 59 | 1.5.2.2.3 | Implementar RFS15 | manual | 2d | 2024-07-25 | 2024-07-26 | 58 |  | Arquiteto de Software; Desenvolvedor | 7h | 700 |
| 60 | 1.5.2.2.4 | Implementar RFS16 | manual | 2d | 2024-07-26 | 2024-07-29 | 59 |  | Arquiteto de Software; Desenvolvedor | 8h | 800 |
| 61 | 1.5.2.2.5 | Implementar RFS17 | manual | 2d | 2024-07-29 | 2024-07-30 | 60 |  | Arquiteto de Software; Desenvolvedor | 5h | 500 |
| 62 | 1.5.2.2.6 | Implementar RFS18 | manual | 2d | 2024-07-30 | 2024-07-31 | 61 |  | Arquiteto de Software; Cliente | 7h | 700 |
| 63 | 1.5.2.2.7 | Testar RFC04 | manual | 1d | 2024-07-31 | 2024-07-31 | 62 |  | Testador de Qualidade; Testador de Software | 1h | 85 |
| 64 | 1.5.3 | **Release 03** |  | 6d | 2024-08-01 | 2024-08-08 |  | 0d |  | 36h | 2,785 |
| 65 | 1.5.3.1 | **Implementação RFC05** |  | 6d | 2024-08-01 | 2024-08-08 |  | 0d |  | 36h | 2,785 |
| 66 | 1.5.3.1.1 | Implementar RFS19 | manual | 2d | 2024-08-01 | 2024-08-02 | 63 |  | Arquiteto de Software; Desenvolvedor | 5h | 500 |
| 67 | 1.5.3.1.2 | Implementar RFS20 | manual | 2d | 2024-08-02 | 2024-08-05 | 66 |  | Arquiteto de Software; Desenvolvedor | 6h | 600 |
| 68 | 1.5.3.1.3 | Implementar RFS21 | manual | 2d | 2024-08-05 | 2024-08-06 | 67 |  | Arquiteto de Software; Desenvolvedor | 5h | 500 |
| 69 | 1.5.3.1.4 | Implementar RFS22 | manual | 2d | 2024-08-06 | 2024-08-07 | 68 |  | Arquiteto de Software; Desenvolvedor | 12h | 400 |
| 70 | 1.5.3.1.5 | Implementar RFS23 | manual | 2d | 2024-08-07 | 2024-08-08 | 69 |  | Arquiteto de Software; Desenvolvedor | 7h | 700 |
| 71 | 1.5.3.1.6 | Testar RFC05 | manual | 1d | 2024-08-08 | 2024-08-08 | 70 |  | Testador de Qualidade; Testador de Software | 1h | 85 |
| 72 | 1.6 | **Controle e Mudanças** |  | 1d? | 2024-07-02 | 2024-07-02 |  | 0d |  | 11.62h |  |
| 73 | 1.6.1 | Avaliação de Solicitações de Mudança | manual | 1d? | 2024-07-02 | 2024-07-02 | 32 |  |  | 4h |  |
| 74 | 1.6.2 | Revisão de Relatórios de Desempenho | manual | 1d? | 2024-07-02 | 2024-07-02 | 32 |  |  | 3h |  |
| 75 | 1.6.3 | Reunião de Ajuste de Plano com a Equipe | manual | 1d? | 2024-07-02 | 2024-07-02 | 32 |  |  | 4.62h |  |
| 76 | 1.7 | **Monitoramento e Controle** |  | 1d? | 2024-08-09 | 2024-08-09 |  | 0d |  | 7.26h | 600 |
| 77 | 1.7.1 | Acompanhar o Projeto | manual | 1d | 2024-08-09 | 2024-08-09 | 71 |  | Desenvolvedor Principal | 5h | 600 |
| 78 | 1.7.2 | Tirar dúvidas sobre o andamento do projeto | manual | 1d? | 2024-08-09 | 2024-08-09 |  |  |  | 2.26h |  |
| 79 | 1.8 | **Fase de Fechamento** |  | 1d | 2024-08-07 | 2024-08-07 |  | 0d |  | 22.15h |  |
| 80 | 1.8.1 | Revisão dos Resultados do Projeto | manual | 1d | 2024-08-07 | 2024-08-07 | 69 |  |  | 4h |  |
| 81 | 1.8.2 | Documentação Final e Relatório de Encerramento | manual | 1d | 2024-08-07 | 2024-08-07 | 69 |  |  | 10.15h |  |
| 82 | 1.8.3 | Reunião de Encerramento com a Equipe e Stakeholders | manual | 1d | 2024-08-07 | 2024-08-07 | 69 |  |  | 8h |  |
